# Big Project Schedule Template

Schedule from MS Project, 2020-05-01 to 2022-05-02, status date 2020-06-25, costs in $, A marks actual dates.
01

## Calendars

- Standard: Mon-Fri 08:00-12:00, 13:00-17:00; Sat-Sun off.

## Resources

| Resource |
| --- |
| Project Resources |
| LCS – Project Management Assistant |
| Automation Consultant |
| Do Not use |
| Hardware Designer |
| Documentation Specialists |
| Do Not Use |
| Do Not Use |
| Do Not Use |
| Automation Lead Engineer |
| Project Assistant |
| Do Not Use |
| Project Manager |
| Automation Engineer I |
| Automation Engineer II |
| Do Not use |
| LCS-Support/Site Service Systems En |
| Lead Engineer - Site Resident |
| MES Engineer - Site Resident |
| Senior/Lead Engineer - Blended Rate |
| Syncade Center of Excellence |
| DO NOT USE |
| DO NOT USE |
| Non Project Time |
| Non Project Time |
| Mileage |
| Non-Funded / Zero-Cost Work |
| On Call Stipend |
| MES Consultant |
| MES Engineer |
| MES Lead Engineer |
| Program Manager |
| Automation Senior Lead Engineer |
| No Charge Customer Goodwill |
| Resident Engineer |
| Other project specific |
| No Charge Warranty |
| Non Project Time |
| LCS-Site Lead Engineer |
| LCS-Project Manager |
| DO NOT USE |
| DO NOT USE |
| DO NOT USE |
| LCS-Site Service Engineer |
| RMS-Engineer |
| DO NOT USE |
| DO NOT USE |
| Haar |

## Schedule

| ID | WBS | Task | Type | Duration | Start | Finish | Predecessors | Remaining | Baseline start | Baseline finish | Baseline duration | Total slack | Free slack | Resources | Work | Cost | Sub Project ID | Import Comments | Text5 | Activity ID | Responsible | Activity Status | Text11 |
| --- | --- | --- | --- | --- | --- | --- | --- | --- | --- | --- | --- | --- | --- | --- | --- | --- | --- | --- | --- | --- | --- | --- | --- |
| 1 | 1 | **Project Schedule** |  | 522d | 2020-05-01 A | 2022-05-02 |  | 522d |  |  |  | 0d |  |  | 945h | 40,391.36 | 10000 | Modified | P2664 |  |  |  |  |
| 2 | 1.1 | **Administration** |  | 522d | 2020-05-01 A | 2022-05-02 |  | 522d |  |  |  | 0d |  |  | 117h | 5,148 | 11000 | Modified | P2664 |  |  |  |  |
| 3 | 1.1.1 | PROJECTNAME - Project Management |  | 521.97d | 2020-05-01 A | 2022-05-02 |  | 521.97d | 2020-05-01 | 2022-05-02 | 0d | 0d |  | Project Manager | 9h | 396 | 11000 | Modified | P2664 | 11010 | Paul McKinney | Planned | 100029255 |
| 4 | 1.1.2 | PROJECTNAME - Project Management Assistance |  | 522d | 2020-05-01 | 2022-05-02 |  |  | 2020-05-01 | 2022-05-02 | 0d | 0d |  | Project Assistant | 9h | 396 | 11000 | Modified | P2664 | 11020 | Paul McKinney | Planned | 100029256 |
| 5 | 1.1.3 | PROJECTNAME - Meetings LEAD |  | 420.25d | 2020-05-01 A | 2021-12-10 |  | 420.25d | 2020-05-01 | 2022-05-02 | 0d | 101.75d |  | Automation Lead Engineer | 9h | 396 | 11000 | Modified | P2664 | 11030 | Paul McKinney | Planned | 100029258 |
| 6 | 1.1.4 | PROJECTNAME - Meetings ENGR1 |  | 481.12d | 2020-05-01 A | 2022-03-07 |  | 481.12d | 2020-05-01 | 2022-05-02 | 0d | 40.88d |  | Automation Engineer I | 9h | 396 | 11000 | Modified | P2664 | 11040 | Paul McKinney | Planned | 100029259 |
| 7 | 1.1.5 | PROJECTNAME - Meetings ENGR2 |  | 479.98d | 2020-05-01 A | 2022-03-03 |  | 479.98d | 2020-05-01 | 2022-05-02 | 0d | 42.02d |  | Automation Engineer II | 9h | 396 | 11000 | Modified | P2664 | 11050 | Paul McKinney | Planned | 100029260 |
| 8 | 1.1.6 | PROJECTNAME - Meetings MESLED |  | 369.79d | 2020-05-01 A | 2021-09-30 |  | 369.79d | 2020-05-01 | 2022-05-02 | 0d | 152.21d |  | MES Lead Engineer | 9h | 396 | 11000 | Modified | P2664 | 11060 | Paul McKinney | Planned | 100029265 |
| 9 | 1.1.7 | PROJECTNAME - Meetings MESENG |  | 483.31d | 2020-05-01 A | 2022-03-09 |  | 483.31d | 2020-05-01 | 2022-05-02 | 0d | 38.69d |  | MES Engineer | 9h | 396 | 11000 | Modified | P2664 | 11070 | Paul McKinney | Planned | 100029264 |
| 10 | 1.1.8 | PROJECTNAME - Meetings SSSENG |  | 522d | 2020-05-01 | 2022-05-02 |  |  |  |  |  | 0d |  | LCS-Support/Site Service Systems En | 9h | 396 | 11000 | Modified | P2664 | 11075 | Paul McKinney | Planned | 100032838 |
| 11 | 1.1.9 | PROJECTNAME - Travel Time LEAD |  | 522d | 2020-05-01 | 2022-05-02 |  |  | 2020-05-01 | 2022-05-02 | 0d | 0d |  | Automation Lead Engineer | 9h | 396 | 11000 | Modified | P2664 | 11080 | Paul McKinney | Planned | 100029266 |
| 12 | 1.1.10 | PROJECTNAME - Travel Time MESLED |  | 522d | 2020-05-01 | 2022-05-02 |  |  | 2020-05-01 | 2022-05-02 | 0d | 0d |  | MES Lead Engineer | 9h | 396 | 11000 | Modified | P2664 | 11090 | Paul McKinney | Planned | 100029261 |
| 13 | 1.1.11 | PROJECTNAME - Travel Time PRJMGR |  | 522d | 2020-05-01 | 2022-05-02 |  |  | 2020-05-01 | 2022-05-02 | 0d | 0d |  | Project Manager | 9h | 396 | 11000 | Modified | P2664 | 11100 | Paul McKinney | Planned | 100029257 |
| 14 | 1.1.12 | PROJECTNAME - Documentation Specialist |  | 522d | 2020-05-01 | 2022-05-02 |  |  | 2020-05-01 | 2022-05-02 | 0d | 0d |  | Documentation Specialists | 9h | 396 | 11000 | Modified | P2664 | 11110 | Paul McKinney | Planned | 100029262 |
| 15 | 1.1.13 | PROJECTNAME - Project Internal KickOff MS | milestone | 0d | 2020-05-01 | 2020-05-01 |  |  | 2020-06-10 | 2020-06-10 | 0d | 28d | 0d |  |  |  | 11000 | Modified | P2664 | 11130 | Paul McKinney | Planned | 100030453 |
| 16 | 1.1.14 | PROJECTNAME - Internal Lessons Learned MS | milestone | 0d | 2020-05-21 | 2020-05-21 | 65FS+40h |  | 2021-09-24 | 2021-09-24 | 0d | 502d | 0d |  |  |  | 11000 | Modified | P2664 | 11140 | Paul McKinney | Planned | 100030454 |
| 17 | 1.1.15 | PROJECTNAME - Customer Lessons Learned MS | milestone | 0d | 2020-05-28 | 2020-05-28 | 16FS+40h |  | 2021-10-01 | 2021-10-01 | 0d | 502d |  |  |  |  | 11000 | Modified | P2664 | 11150 | Paul McKinney | Planned | 100030455 |
| 18 | 1.1.16 | PROJECTNAME - Contingency |  | 522d | 2020-05-01 | 2022-05-02 |  |  | 2020-05-01 | 2022-05-02 | 0d | 0d |  | Project Manager | 9h | 396 | 11000 | Modified | P2664 | 11160 | Paul McKinney | Planned | 100030456 |
| 19 | 1.1.17 | PROJECTNAME - Administrative Expenses |  | 522d | 2020-05-01 A | 2022-05-02 |  | 522d | 2020-05-01 | 2022-05-02 | 0d | 0d |  |  |  |  | 11000 | Modified | P2664 | EXPENSE | Paul McKinney | Planned | 100029263 |
| 20 | 1.2 | **DeltaV Software Requirements And Design** |  | 50.59d | 2020-05-22 A | 2020-08-03 |  | 50.59d |  |  |  | 455.41d |  |  | 18h | 792 | 12000 | Modified | P2664 |  |  |  |  |
| 21 | 1.2.1 | PROJECTNAME - DeltaV Requirements Documents |  | 2.7d | 2020-05-22 A | 2020-05-27 |  | 2.7d |  |  |  | 20.31d |  | Automation Lead Engineer | 9h | 396 | 12000 | Modified | P2664 | 12010 | Paul McKinney | Planned | 100030457 |
| 22 | 1.2.2 | PROJECTNAME - DeltaV Design Document |  | 22.58d | 2020-06-25 A | 2020-07-27 | 21 | 22.58d |  |  |  | 0d |  | Automation Lead Engineer | 9h | 396 | 12000 | Modified | P2664 | 12030 | Paul McKinney | Planned | 100030459 |
| 23 | 1.2.3 | PROJECTNAME - DeltaV Design Review MS | milestone | 0d | 2020-07-20 | 2020-07-20 | 22FS-40h |  |  |  |  | 0d |  |  |  |  | 12000 | Modified | P2664 | 12032 | Paul McKinney | Planned | 100030464 |
| 24 | 1.2.4 | PROJECTNAME - DeltaV Design Approval MS | milestone | 0d | 2020-08-03 | 2020-08-03 | 23FS+80h |  |  |  |  | 455.41d |  |  |  |  | 12000 | Modified | P2664 | 12033 | Paul McKinney | Planned | 100030465 |

| ID | WBS | Task | Type | Duration | Start | Finish | Predecessors | Remaining | Baseline start | Baseline finish | Baseline duration | Total slack | Free slack | Resources | Work | Cost | Sub Project ID | Import Comments | Text5 | Activity ID | Responsible | Activity Status | Text11 |
| --- | --- | --- | --- | --- | --- | --- | --- | --- | --- | --- | --- | --- | --- | --- | --- | --- | --- | --- | --- | --- | --- | --- | --- |
| 25 | 1.3 | **DeltaV Hardware Design** |  | 139.59d | 2020-05-01 | 2020-11-12 |  |  |  |  |  | 332.16d |  |  | 54h | 2,375.83 | 13000 | Modified | P2664 |  |  |  |  |
| 26 | 1.3.1 | PROJECTNAME - Hardware Design |  | 97d | 2020-05-01 | 2020-09-14 |  |  | 2020-11-06 | 2021-03-23 | 0d | 332.16d | 0d | Automation Lead Engineer | 9h | 396 | 13000 | Modified | P2664 | 13010 | Paul McKinney | Planned | 100031304 |
| 27 | 1.3.2 | PROJECTNAME - Drawings |  | 46d | 2020-05-29 | 2020-07-31 | 26SS+160h |  | 2021-01-19 | 2021-03-23 | 0d | 332.16d | 0d | Hardware Designer | 9h | 396 | 13000 | Modified | P2664 | 13020 | Paul McKinney | Planned | 100031305 |
| 28 | 1.3.3 | PROJECTNAME - Drawings Review |  | 10.42d | 2020-08-03 | 2020-08-17 | 27 |  | 2021-03-23 | 2021-04-07 | 0d | 332.16d | 0d | Hardware Designer | 9h | 395.95 | 13000 | Modified | P2664 | 13030 | Paul McKinney | Planned | 100031306 |
| 29 | 1.3.4 | PROJECTNAME - Drawings Updates |  | 4.17d | 2020-08-17 | 2020-08-21 | 28 |  | 2021-04-07 | 2021-04-13 | 0d | 332.16d | 0d | Hardware Designer | 9h | 395.88 | 13000 | Modified | P2664 | 13040 | Paul McKinney | Planned | 100031307 |
| 30 | 1.3.5 | PROJECTNAME - Drawings Approval MS | milestone | 0d | 2020-08-21 | 2020-08-21 | 29 |  | 2021-04-13 | 2021-04-13 | 0d | 332.16d | 0d |  |  |  | 13000 | Modified | P2664 | 13050 | Paul McKinney | Planned | 100031308 |
| 31 | 1.3.6 | PROJECTNAME - DeltaV Hardware Quote |  | 4d | 2020-08-21 | 2020-08-27 | 30 |  | 2021-04-13 | 2021-04-19 | 0d | 348.07d | 0d | Automation Lead Engineer | 9h | 396 | 13000 | Modified | P2664 | 13060 | Paul McKinney | Planned | 100031309 |
| 32 | 1.3.7 | PROJECTNAME - DeltaV Hardware Quote Review MS | milestone | 0d | 2020-08-27 | 2020-08-27 | 31 |  | 2021-04-19 | 2021-04-19 | 0d | 348.07d | 0d |  |  |  | 13000 | Modified | P2664 | 13070 | Paul McKinney | Planned | 100031310 |
| 33 | 1.3.8 | PROJECTNAME - DeltaV Hardware Purchase Order MS | milestone | 0d | 2020-10-08 | 2020-10-08 | 32FS+240h |  | 2021-04-23 | 2021-04-23 | 0d | 348.07d | 0d |  |  |  | 13000 | Modified | P2664 | 13080 | Paul McKinney | Planned | 100031311 |
| 34 | 1.3.9 | PROJECTNAME - Panel Fab Coordination/Cutover Plan |  | 25d | 2020-10-08 | 2020-11-12 | 33 |  | 2021-04-23 | 2021-05-28 | 0d | 382.41d |  | Hardware Designer | 9h | 396 | 13000 | Modified | P2664 | 13090 | Paul McKinney | Planned | 100031312 |
| 35 | 1.4 | **DeltaV Infrastructure** |  | 59.34d | 2020-10-08 | 2020-12-30 |  |  |  |  |  | 348.07d |  |  | 45h | 1,979.63 | 14000 | Modified | P2664 |  |  |  |  |
| 36 | 1.4.1 | PROJECTNAME - DeltaV Servers Ordered MS | milestone | 0d | 2020-10-08 | 2020-10-08 | 33 |  | 2021-05-14 | 2021-05-14 | 0d | 348.07d | 0d |  |  |  | 14000 | Modified | P2664 | 14005 | Paul McKinney | Planned | 100031313 |
| 37 | 1.4.2 | PROJECTNAME - DeltaV Servers Arrive MS | milestone | 0d | 2020-11-19 | 2020-11-19 | 36FS+240h |  | 2021-06-24 | 2021-06-24 | 0d | 348.07d | 0d |  |  |  | 14000 | Modified | P2664 | 14006 | Paul McKinney | Planned | 100031314 |
| 38 | 1.4.3 | PROJECTNAME - Rack Assembly |  | 5.33d | 2020-11-19 | 2020-11-26 | 37 |  | 2021-06-25 | 2021-07-02 | 0d | 348.07d | 0d | LCS-Support/Site Service Systems En | 9h | 395.94 | 14000 | Modified | P2664 | 14010 | Paul McKinney | Planned | 100031315 |
| 39 | 1.4.4 | PROJECTNAME - Server Setup |  | 10.67d | 2020-11-26 | 2020-12-11 | 38 |  | 2021-07-02 | 2021-07-16 | 0d | 348.07d | 0d | LCS-Support/Site Service Systems En | 9h | 395.95 | 14000 | Modified | P2664 | 14020 | Paul McKinney | Planned | 100031316 |
| 40 | 1.4.5 | PROJECTNAME - Operator Station Setup |  | 6.67d | 2020-12-11 | 2020-12-22 | 39 |  | 2021-07-19 | 2021-07-27 | 0d | 348.07d | 0d | LCS-Support/Site Service Systems En | 9h | 395.93 | 14000 | Modified | P2664 | 14030 | Paul McKinney | Planned | 100031317 |
| 41 | 1.4.6 | PROJECTNAME - Backup & Recovery Plan & Install |  | 4d | 2020-12-22 | 2020-12-28 | 40 |  | 2021-07-27 | 2021-08-02 | 0d | 348.07d | 0d | LCS-Support/Site Service Systems En | 9h | 396 | 14000 | Modified | P2664 | 14040 | Paul McKinney | Planned | 100031318 |
| 42 | 1.4.7 | PROJECTNAME - McAfee ePO Plan & Install |  | 2.67d | 2020-12-28 | 2020-12-30 | 41 |  | 2021-08-02 | 2021-08-05 | 0d | 348.07d |  | LCS-Support/Site Service Systems En | 9h | 395.81 | 14000 | Modified | P2664 | 14050 | Paul McKinney | Planned | 100031319 |
| 43 | 1.5 | **DeltaV System Development** |  | 57.66d | 2020-07-20 A | 2020-10-07 |  | 57.66d |  |  |  | 323.34d |  |  | 27h | 1,187.95 | 15000 | Modified | P2664 |  |  |  |  |
| 44 | 1.5.1 | PROJECTNAME - DeltaV Base Build |  | 22.66d | 2020-07-20 A | 2020-08-19 | 23 | 22.66d |  |  |  | 323.34d | 0d | Automation Engineer I | 9h | 395.95 | 15000 | Modified | P2664 | 15010 | Paul McKinney | Planned | 100031320 |
| 45 | 1.5.2 | PROJECTNAME - DeltaV Graphics |  | 16d | 2020-08-19 | 2020-09-10 | 44 |  |  |  |  | 342.34d | 19d | Automation Engineer I | 9h | 396 | 15000 | Modified | P2664 | 15014 | Paul McKinney | Planned | 100031321 |
| 46 | 1.5.3 | PROJECTNAME - DeltaV Logic |  | 35d | 2020-08-19 | 2020-10-07 | 44 |  |  |  |  | 323.34d | 0d | Automation Lead Engineer | 9h | 396 | 15000 | Modified | P2664 | 15030 | Paul McKinney | Planned | 100031325 |
| 47 | 1.6 | **DeltaV System Test Planning** |  | 109d | 2020-05-01 | 2020-09-30 |  |  |  |  |  | 413d |  |  | 9h | 396 | 16000 | Modified | P2664 |  |  |  |  |
| 48 | 1.6.1 | PROJECTNAME - Preliminary Screens Approvals Complete MS | milestone | 0d | 2020-05-01 | 2020-05-01 |  |  | 2021-02-19 | 2021-02-19 | 0d | 522d |  |  |  |  | 16000 | Modified | P2664 | 16010 | Paul McKinney | Planned | 100031335 |
| 49 | 1.6.2 | PROJECTNAME - DeltaV Test Protocol Development |  | 109d | 2020-05-01 | 2020-09-30 |  |  | 2021-01-08 | 2021-06-10 | 0d | 413d |  | Automation Lead Engineer | 9h | 396 | 16000 | Modified | P2664 | 16020 | Paul McKinney | Planned | 100031336 |

| ID | WBS | Task | Type | Duration | Start | Finish | Predecessors | Baseline start | Baseline finish | Baseline duration | Total slack | Free slack | Resources | Work | Cost | Sub Project ID | Import Comments | Text5 | Activity ID | Responsible | Activity Status | Text11 |
| --- | --- | --- | --- | --- | --- | --- | --- | --- | --- | --- | --- | --- | --- | --- | --- | --- | --- | --- | --- | --- | --- | --- |
| 50 | 1.7 | **DeltaV System Integration** |  | 27d | 2020-10-07 | 2020-11-13 |  |  |  |  | 323.34d |  |  | 9h | 396 | 17000 | Modified | P2664 |  |  |  |  |
| 51 | 1.7.1 | PROJECTNAME - DeltaV Developer Testing |  | 27d | 2020-10-07 | 2020-11-13 | 45, 46 | 2020-10-13 | 2020-11-19 | 0d | 323.34d | 0d | Automation Lead Engineer | 9h | 396 | 17000 | Modified | P2664 | 17010 | Paul McKinney | Planned | 100031337 |
| 52 | 1.7.2 | PROJECTNAME - DeltaV Developer Testing Complete MS | milestone | 0d | 2020-11-13 | 2020-11-13 | 51 | 2021-04-28 | 2021-04-28 | 0d | 323.34d | 0d |  |  |  | 17000 | Modified | P2664 | 17060 | Paul McKinney | Planned | 100032383 |
| 53 | 1.8 | **DeltaV Factory Acceptance Test** |  | 226d | 2020-05-01 | 2021-03-12 |  |  |  |  | 296d |  |  | 18h | 792 | 18000 | Modified | P2664 |  |  |  |  |
| 54 | 1.8.1 | PROJECTNAME - DeltaV System Setup & Support |  | 226d | 2020-05-01 | 2021-03-12 | 15 | 2020-06-10 | 2021-04-21 | 0d | 296d |  | Automation Lead Engineer | 9h | 396 | 18000 | Modified | P2664 | 18010 | Paul McKinney | Planned | 100031344 |
| 55 | 1.8.2 | PROJECTNAME - DeltaV FAT |  | 5d | 2020-11-13 | 2020-11-20 | 52 | 2021-04-28 | 2021-05-05 | 0d | 323.34d | 0d | Automation Lead Engineer | 9h | 396 | 18000 | Modified | P2664 | 18020 | Paul McKinney | Planned | 100031345 |
| 56 | 1.8.3 | PROJECTNAME - DeltaV Indy FAT MS | milestone | 0d | 2020-11-20 | 2020-11-20 | 55 | 2021-06-02 | 2021-06-02 | 0d | 323.34d | 0d |  |  |  | 18000 | Modified | P2664 | 18070 | Paul McKinney | Planned | 100031346 |
| 57 | 1.9 | **DeltaV System Commisioning** |  | 111d | 2020-05-01 | 2020-10-02 |  |  |  |  | 411d |  |  | 54h | 2,376 | 19000 | Modified | P2664 |  |  |  |  |
| 58 | 1.9.1 | PROJECTNAME - Shutdown MS | milestone | 0d | 2020-05-01 | 2020-05-01 |  | 2021-09-06 | 2021-09-06 | 0d | 411d | 0d |  |  |  | 19000 | Modified | P2664 | 19010 | Paul McKinney | Planned | 100031347 |
| 59 | 1.9.2 | PROJECTNAME - System Com Project Management |  | 111d | 2020-05-01 | 2020-10-02 | 58 | 2021-09-06 | 2022-02-07 | 0d | 411d |  | Project Manager | 9h | 396 | 19000 | Modified | P2664 | 19020 | Paul McKinney | Planned | 100031348 |
| 60 | 1.9.3 | PROJECTNAME - DeltaV Configuration Migration |  | 4.7d | 2020-05-01 | 2020-05-07 | 58 | 2021-09-06 | 2021-09-10 | 0d | 411.3d | 0d | LCS-Support/Site Service Systems En | 9h | 396 | 19000 | Modified | P2664 | 19030 | Paul McKinney | Planned | 100031349 |
| 61 | 1.9.4 | PROJECTNAME - On-Site Startup |  | 106d | 2020-05-07 | 2020-10-02 | 60 | 2021-09-10 | 2022-02-07 | 0d | 411.3d |  | Automation Lead Engineer | 9h | 396 | 19000 | Modified | P2664 | 19040 | Paul McKinney | Planned | 100031350 |
| 62 | 1.9.5 | PROJECTNAME - On-Site Startup (OT 1.5X) |  | 106d | 2020-05-07 | 2020-10-02 | 60 | 2021-09-10 | 2022-02-07 | 0d | 411.3d |  | Automation Lead Engineer | 9h | 396 | 19000 | Modified | P2664 | 19050 | Paul McKinney | Planned | 100031351 |
| 63 | 1.9.6 | PROJECTNAME - On-Site Startup (OT 2X) |  | 106d | 2020-05-07 | 2020-10-02 | 60 | 2021-09-10 | 2022-02-07 | 0d | 411.3d |  | Automation Lead Engineer | 9h | 396 | 19000 | Modified | P2664 | 19060 | Paul McKinney | Planned | 100031352 |
| 64 | 1.9.7 | PROJECTNAME - System Com Travel Time |  | 106d | 2020-05-07 | 2020-10-02 | 60 | 2021-09-10 | 2022-02-07 | 0d | 411.3d |  | Automation Lead Engineer | 9h | 396 | 19000 | Modified | P2664 | 19070 | Paul McKinney | Planned | 100031353 |
| 65 | 1.9.8 | PROJECTNAME - Startup MS | milestone | 0d | 2020-05-14 | 2020-05-14 | 58SF+80h | 2021-09-17 | 2021-09-17 | 0d | 502d | 0d |  |  |  | 19000 | Modified | P2664 | 19080 | Paul McKinney | Planned | 100031354 |
| 66 | 1.9.9 | PROJECTNAME - System Commissioning Expenses |  | 106d | 2020-05-01 | 2020-09-25 | 58 | 2021-09-06 | 2022-01-31 | 0d | 416d |  |  |  |  | 19000 | Modified | P2664 | EXPENSE | Paul McKinney | Planned | 100031355 |
| 67 | 1.10 | **DeltaV Knowledge Transfer** |  | 53d | 2020-11-20 | 2021-02-03 |  |  |  |  | 323.34d |  |  | 45h | 1,980 | 20000 | Modified | P2664 |  |  |  |  |
| 68 | 1.10.1 | PROJECTNAME - DeltaV Operator Training Project Management |  | 26d | 2020-11-20 | 2020-12-28 | 56 | 2021-06-02 | 2021-07-08 | 0d | 350.34d |  | Project Manager | 9h | 396 | 20000 | Modified | P2664 | 20010 | Paul McKinney | Planned | 100031356 |
| 69 | 1.10.2 | PROJECTNAME - DeltaV Operator Training Project Management Assistance |  | 26d | 2020-11-20 | 2020-12-28 | 56 | 2021-06-02 | 2021-07-08 | 0d | 350.34d |  | Project Assistant | 9h | 396 | 20000 | Modified | P2664 | 20020 | Paul McKinney | Planned | 100031357 |
| 70 | 1.10.3 | PROJECTNAME - DeltaV Operator Training Material |  | 26d | 2020-11-20 | 2020-12-28 | 56 | 2021-06-02 | 2021-07-08 | 0d | 324.34d | 0d | Automation Lead Engineer | 9h | 396 | 20000 | Modified | P2664 | 20030 | Paul McKinney | Planned | 100031358 |
| 71 | 1.10.4 | PROJECTNAME - DeltaV Operator Training Begins MS | milestone | 0d | 2020-12-28 | 2020-12-28 | 70 | 2021-07-08 | 2021-07-08 | 0d | 324.34d | 0d |  |  |  | 20000 | Modified | P2664 | 20040 | Paul McKinney | Planned | 100031359 |
| 72 | 1.10.5 | PROJECTNAME - DeltaV Operator Training |  | 26d | 2020-12-28 | 2021-02-02 | 71 | 2021-07-08 | 2021-08-13 | 0d | 324.34d |  | Automation Lead Engineer | 9h | 396 | 20000 | Modified | P2664 | 20050 | Paul McKinney | Planned | 100031360 |
| 73 | 1.10.6 | PROJECTNAME - DeltaV Operator Training Travel Time |  | 53d | 2020-11-20 | 2021-02-03 | 56 | 2021-06-02 | 2021-08-16 | 0d | 323.34d |  | Automation Lead Engineer | 9h | 396 | 20000 | Modified | P2664 | 20090 | Paul McKinney | Planned | 100031364 |
| 74 | 1.10.7 | PROJECTNAME - DeltaV Operator Training Expenses |  | 53d | 2020-11-20 | 2021-02-03 | 56 | 2021-06-02 | 2021-08-16 | 0d | 323.34d |  |  |  |  | 20000 | Modified | P2664 | EXPENSE | Paul McKinney | Planned | 100031365 |

| ID | WBS | Task | Type | Duration | Start | Finish | Predecessors | Remaining | Total slack | Free slack | Resources | Work | Cost | Sub Project ID | Import Comments | Text5 | Activity ID | Responsible | Activity Status | Text11 |
| --- | --- | --- | --- | --- | --- | --- | --- | --- | --- | --- | --- | --- | --- | --- | --- | --- | --- | --- | --- | --- |
| 75 | 1.11 | **Syncade Configuration Workstream** |  | 286d | 2020-05-14 A | 2021-06-18 |  | 286d | 226d |  |  | 279h | 12,275.95 | 21000 | Modified | P2664 |  |  |  |  |
| 76 | 1.11.1 | PROJECTNAME - Initial Syncade Design |  | 14.14d | 2020-06-17 A | 2020-07-07 | 15FS+40h | 14.14d | 6.86d | 0d | MES Lead Engineer | 9h | 396 | 21000 | Modified | P2664 | 21010 | Paul McKinney | Planned | 100031366 |
| 77 | 1.11.2 | PROJECTNAME - Basic Syncade Training for Team MS | milestone | 0d | 2020-05-14 | 2020-05-14 | 15FS+80h |  | 512d |  |  |  |  | 21000 | Modified | P2664 | 21012 | Paul McKinney | Planned | 100031367 |
| 78 | 1.11.3 | PROJECTNAME - Process Mapping & Requirements Workshop #1 MS | milestone | 0d | 2020-07-07 | 2020-07-07 | 76 |  | 6.86d |  |  |  |  | 21000 | Modified | P2664 | 21020 | Paul McKinney | Planned | 100031368 |
| 79 | 1.11.4 | PROJECTNAME - Design Updates & Storyboards |  | 17.02d | 2020-07-16 A | 2020-08-10 | 78 | 17.02d | 0d |  | MES Lead Engineer | 9h | 395.95 | 21000 | Modified | P2664 | 21030 | Paul McKinney | Planned | 100031369 |
| 80 | 1.11.5 | PROJECTNAME - Solution Review Workshop #2 MS | milestone | 0d | 2020-08-10 | 2020-08-10 | 79 |  | 0d |  |  |  |  | 21000 | Modified | P2664 | 21040 | Paul McKinney | Planned | 100031370 |
| 81 | 1.11.6 | PROJECTNAME - Equipment Configuration - Guideline |  | 6d | 2020-08-10 | 2020-08-18 | 80 |  | 0d |  | MES Engineer | 9h | 396 | 21000 | Modified | P2664 | 21050 | Paul McKinney | Planned | 100031371 |
| 82 | 1.11.7 | PROJECTNAME - Equipment Configuration - Design, Develop & Informal Test |  | 49.02d | 2020-07-27 A | 2020-10-02 | 81 | 49.02d | 405.98d | 0d | MES Engineer | 9h | 396 | 21000 | Modified | P2664 | 21055 | Paul McKinney | Planned | 100031372 |
| 83 | 1.11.8 | PROJECTNAME - Equipment Configuration - Workshop Review |  | 6d | 2020-10-02 | 2020-10-12 | 82 |  | 405.98d |  | MES Engineer | 9h | 396 | 21000 | Modified | P2664 | 21060 | Paul McKinney | Planned | 100031373 |
| 84 | 1.11.9 | PROJECTNAME - Materials and Bill of Process Configuration - Guideline |  | 6d | 2020-08-10 | 2020-08-18 | 80 |  | 0d |  | MES Engineer | 9h | 396 | 21000 | Modified | P2664 | 21065 | Paul McKinney | Planned | 100031374 |
| 85 | 1.11.10 | PROJECTNAME - Materials and Bill of Process Configuration - Design, Develop & Informal Test |  | 46.02d | 2020-07-27 A | 2020-09-29 | 84 | 46.02d | 0d |  | MES Engineer | 9h | 396 | 21000 | Modified | P2664 | 21070 | Paul McKinney | Planned | 100031375 |
| 86 | 1.11.11 | PROJECTNAME - Materials and Bill of Process Configuration - Workshop Review |  | 6d | 2020-09-29 | 2020-10-07 | 85 |  | 0d |  | MES Engineer | 9h | 396 | 21000 | Modified | P2664 | 21075 | Paul McKinney | Planned | 100031376 |
| 87 | 1.11.12 | PROJECTNAME - RA Programming Guide MES Lead |  | 5d | 2020-10-07 | 2020-10-14 | 84, 85, 86 |  | 0d |  | MES Lead Engineer | 9h | 396 | 21000 | Modified | P2664 | 21080 | Paul McKinney | Planned | 100031377 |
| 88 | 1.11.13 | PROJECTNAME - RA Programming Guide MES Engineer |  | 4d | 2020-10-07 | 2020-10-13 | 87SS |  | 0d |  | MES Engineer | 9h | 396 | 21000 | Modified | P2664 | 21085 | Paul McKinney | Planned | 100031378 |
| 89 | 1.11.14 | PROJECTNAME - Run Management Design, Develop & Informal Test MES Lead |  | 74.02d | 2020-07-27 A | 2020-11-06 | 88 | 74.02d | 386.98d | 0d | MES Lead Engineer | 9h | 396 | 21000 | Modified | P2664 | 21090 | Paul McKinney | Planned | 100031379 |
| 90 | 1.11.15 | PROJECTNAME - Run Management Design, Develop & Informal Test MES Engineer |  | 12d | 2020-07-27 | 2020-08-11 | 89SS |  | 53d | 0d | MES Engineer | 9h | 396 | 21000 | Modified | P2664 | 21095 | Paul McKinney | Planned | 100031380 |
| 91 | 1.11.16 | PROJECTNAME - Mix Tank Weigh, Charge Materials - Design, Develop & Informal Test MES Lead |  | 30d | 2020-08-12 | 2020-09-22 | 90 |  | 53d | 0d | MES Lead Engineer | 9h | 396 | 21000 | Modified | P2664 | 21100 | Paul McKinney | Planned | 100031381 |
| 92 | 1.11.17 | PROJECTNAME - Mix Tank Weigh, Charge Materials - Design, Develop & Informal Test MES Engineer |  | 38d | 2020-08-12 | 2020-10-02 | 91SS |  | 53d | 0d | MES Engineer | 9h | 396 | 21000 | Modified | P2664 | 21105 | Paul McKinney | Planned | 100031382 |
| 93 | 1.11.18 | PROJECTNAME - Run Workflow for Blender - Design, Develop & Informal MES Test MES Lead |  | 12d | 2020-10-05 | 2020-10-20 | 92 |  | 53d | 0d | MES Lead Engineer | 9h | 396 | 21000 | Modified | P2664 | 21110 | Paul McKinney | Planned | 100031383 |
| 94 | 1.11.19 | PROJECTNAME - Run Workflow for Blender - Design, Develop & Informal MES Test MES Engineer |  | 12d | 2020-10-05 | 2020-10-20 | 93SS |  | 53d | 0d | MES Engineer | 9h | 396 | 21000 | Modified | P2664 | 21115 | Paul McKinney | Planned | 100031384 |
| 95 | 1.11.20 | PROJECTNAME - Color Pigment Inventory Reciept - Design, Develop & Informal Test MES Lead |  | 16d | 2020-10-21 | 2020-11-11 | 94 |  | 53d | 0d | MES Lead Engineer | 9h | 396 | 21000 | Modified | P2664 | 21120 | Paul McKinney | Planned | 100031385 |
| 96 | 1.11.21 | PROJECTNAME - Color Pigment Inventory Reciept - Design, Develop & Informal Test MES Engineer |  | 15d | 2020-10-21 | 2020-11-10 | 95SS |  | 53d | 0d | MES Engineer | 9h | 396 | 21000 | Modified | P2664 | 21130 | Paul McKinney | Planned | 100031386 |
| 97 | 1.11.22 | PROJECTNAME - Color Lab Mix Tank Color Adj (Nudge) - Design, Develop & Informal Test MES Lead |  | 16d | 2020-11-11 | 2020-12-02 | 96 |  | 53d | 0d | MES Lead Engineer | 9h | 396 | 21000 | Modified | P2664 | 21135 | Paul McKinney | Planned | 100031387 |
| 98 | 1.11.23 | PROJECTNAME - Color Lab Mix Tank Color Adj (Nudge) - Design, Develop & Informal Test MES Engineer |  | 10d | 2020-11-11 | 2020-11-24 | 97SS |  | 53d |  | MES Engineer | 9h | 396 | 21000 | Modified | P2664 | 21140 | Paul McKinney | Planned | 100031388 |
| 99 | 1.11.24 | PROJECTNAME - Bill of Process - Design, Develop, Informal Test MES Lead |  | 10d | 2021-02-08 A | 2021-02-19 | 98 | 10d | 311d | 0d | MES Lead Engineer | 9h | 396 | 21000 | Modified | P2664 | 21145 | Paul McKinney | Planned | 100031389 |
| 100 | 1.11.25 | PROJECTNAME - Bill of Process - Design, Develop, Informal Test MES Engineer |  | 12d | 2021-02-08 | 2021-02-23 | 99SS |  | 212d | 0d | MES Engineer | 9h | 396 | 21000 | Modified | P2664 | 21150 | Paul McKinney | Planned | 100031390 |
| 101 | 1.11.26 | PROJECTNAME - Recipies and Workflows - Workshop Review MES Lead |  | 5d | 2021-02-24 | 2021-03-02 | 100 |  | 212d | 0d | MES Lead Engineer | 9h | 396 | 21000 | Modified | P2664 | 21155 | Paul McKinney | Planned | 100031391 |
| 102 | 1.11.27 | PROJECTNAME - Recipies and Workflows - Workshop Review MES Engineer |  | 14d | 2021-02-24 | 2021-03-15 | 101SS |  | 212d | 0d | MES Engineer | 9h | 396 | 21000 | Modified | P2664 | 21160 | Paul McKinney | Planned | 100031392 |
| 103 | 1.11.28 | PROJECTNAME - Final Solution Review Workshop #3 MS | milestone | 0d | 2021-03-15 | 2021-03-15 | 88, 90, 92, 94, 96, 98, 100, 102 |  | 212d | 0d |  |  |  | 21000 | Modified | P2664 | 21165 | Paul McKinney | Planned | 100031393 |
| 104 | 1.11.29 | PROJECTNAME - Design Updates, Solution Updates & Final Testing |  | 14d | 2021-03-16 | 2021-04-02 | 103 |  | 212d | 0d | MES Lead Engineer | 9h | 396 | 21000 | Modified | P2664 | 21170 | Paul McKinney | Planned | 100031394 |
| 105 | 1.11.30 | PROJECTNAME - Integration Testing |  | 16d | 2021-04-05 | 2021-04-26 | 104 |  | 212d | 0d | MES Lead Engineer | 9h | 396 | 21000 | Modified | P2664 | 21172 | Paul McKinney | Planned | 100031395 |
| 106 | 1.11.31 | PROJECTNAME - Administrative and Security Document and Testing |  | 6d | 2021-04-05 | 2021-04-12 | 104SS, 105SS |  | 212d | 0d | MES Engineer | 9h | 396 | 21000 | Modified | P2664 | 21175 | Paul McKinney | Planned | 100031396 |
| 107 | 1.11.32 | PROJECTNAME - End to End Solution Review Workshop #4 MS | milestone | 0d | 2021-04-12 | 2021-04-12 | 106 |  | 212d | 0d |  |  |  | 21000 | Modified | P2664 | 21180 | Paul McKinney | Planned | 100031397 |
| 108 | 1.11.33 | PROJECTNAME - Syncade FAT |  | 15d | 2021-04-13 | 2021-05-03 | 107 |  | 260d | 0d | MES Lead Engineer | 9h | 396 | 21000 | Modified | P2664 | 21185 | Paul McKinney | Planned | 100031398 |
| 109 | 1.11.34 | PROJECTNAME - Syncade Post FAT Updates |  | 8d | 2021-04-13 | 2021-04-22 | 108SS |  | 267d | 0d | MES Engineer | 9h | 396 | 21000 | Modified | P2664 | 21190 | Paul McKinney | Planned | 100031399 |

| ID | WBS | Task | Type | Duration | Start | Finish | Predecessors | Baseline start | Baseline finish | Baseline duration | Total slack | Free slack | Resources | Work | Cost | Sub Project ID | Import Comments | Text5 | Activity ID | Responsible | Activity Status | Text11 |
| --- | --- | --- | --- | --- | --- | --- | --- | --- | --- | --- | --- | --- | --- | --- | --- | --- | --- | --- | --- | --- | --- | --- |
| 110 | 1.11.35 | **Syncade Reports** |  | 49d | 2021-04-13 | 2021-06-18 |  |  |  |  | 212d |  |  | 18h | 792 | 21300 | Modified | P2664 |  |  |  |  |
| 111 | 1.11.35.1 | PROJECTNAME - Design Reports/Mock Up |  | 20d | 2021-04-13 | 2021-05-10 | 107 |  |  |  | 212d | 0d | MES Lead Engineer | 9h | 396 | 21300 | Modified | P2664 | 21310 | Paul McKinney | Planned | 100031400 |
| 112 | 1.11.35.2 | PROJECTNAME - Report Design Approval MS | milestone | 0d | 2021-05-10 | 2021-05-10 | 111 |  |  |  | 212d | 0d |  |  |  | 21300 | Modified | P2664 | 21320 | Paul McKinney | Planned | 100031401 |
| 113 | 1.11.35.3 | PROJECTNAME - Develop Reports |  | 24d | 2021-05-11 | 2021-06-11 | 112 |  |  |  | 212d | 0d | MES Engineer | 9h | 396 | 21300 | Modified | P2664 | 21330 | Paul McKinney | Planned | 100031402 |
| 114 | 1.11.35.4 | PROJECTNAME - Review Reports MS | milestone | 0d | 2021-06-07 | 2021-06-07 | 113FS-40h |  |  |  | 212d | 0d |  |  |  | 21300 | Modified | P2664 | 21340 | Paul McKinney | Planned | 100031403 |
| 115 | 1.11.35.5 | PROJECTNAME - Approve Reports MS | milestone | 0d | 2021-06-18 | 2021-06-18 | 114FS+80h |  |  |  | 212d | 0d |  |  |  | 21300 | Modified | P2664 | 21350 | Paul McKinney | Planned | 100031404 |
| 116 | 1.12 | **SAP to Syncade Interfaces Workstream** |  | 92d | 2020-08-10 | 2020-12-16 |  |  |  |  | 310.98d |  |  | 27h | 1,188 | 22000 | Modified | P2664 |  |  |  |  |
| 117 | 1.12.1 | PROJECTNAME - SAP Interface Design |  | 46d | 2020-08-10 | 2020-10-13 | 80 | 2020-08-04 | 2020-10-06 | 0d | 310.98d | 0d | MES Lead Engineer | 9h | 396 | 22000 | Modified | P2664 | 22010 | Paul McKinney | Planned | 100031405 |
| 118 | 1.12.2 | PROJECTNAME - Syncade Development SAP Interface |  | 26d | 2020-10-13 | 2020-11-18 | 117 | 2020-10-07 | 2020-11-11 | 0d | 310.98d | 0d | MES Engineer | 9h | 396 | 22000 | Modified | P2664 | 22020 | Paul McKinney | Planned | 100031406 |
| 119 | 1.12.3 | PROJECTNAME - SAP Data Entry Adjustments MS | milestone | 0d | 2020-11-18 | 2020-11-18 | 118FF | 2020-11-11 | 2020-11-11 | 0d | 378.98d |  |  |  |  | 22000 | Modified | P2664 | 22030 | Paul McKinney | Planned | 100031407 |
| 120 | 1.12.4 | PROJECTNAME - SAP Configration Interface Complete MS | milestone | 0d | 2020-11-18 | 2020-11-18 | 118 | 2020-11-11 | 2020-11-11 | 0d | 310.98d | 0d |  |  |  | 22000 | Modified | P2664 | 22040 | Paul McKinney | Planned | 100031408 |
| 121 | 1.12.5 | PROJECTNAME - SAP Interface Developer Testing |  | 20d | 2020-11-18 | 2020-12-16 | 120 | 2020-11-12 | 2020-12-09 | 0d | 310.98d | 0d | MES Engineer | 9h | 396 | 22000 | Modified | P2664 | 22050 | Paul McKinney | Planned | 100031409 |
| 122 | 1.13 | **Syncade to Marque Interfaces Workstream** |  | 25d | 2020-12-16 | 2021-01-20 |  |  |  |  | 310.98d |  |  | 27h | 1,188 | 23000 | Modified | P2664 |  |  |  |  |
| 123 | 1.13.1 | PROJECTNAME - Marque Interface Design |  | 5d | 2020-12-16 | 2020-12-23 | 121 | 2020-12-10 | 2020-12-16 | 0d | 310.98d | 0d | MES Lead Engineer | 9h | 396 | 23000 | Modified | P2664 | 23010 | Paul McKinney | Planned | 100031410 |
| 124 | 1.13.2 | PROJECTNAME - Syncade Development Marque Interface |  | 16d | 2020-12-23 | 2021-01-14 | 123 | 2020-12-17 | 2021-01-07 | 0d | 310.98d | 0d | MES Engineer | 9h | 396 | 23000 | Modified | P2664 | 23020 | Paul McKinney | Planned | 100031411 |
| 125 | 1.13.3 | PROJECTNAME - Marque Interface Developer Testing |  | 4d | 2021-01-14 | 2021-01-20 | 124 | 2021-01-08 | 2021-01-13 | 0d | 310.98d | 0d | MES Engineer | 9h | 396 | 23000 | Modified | P2664 | 23030 | Paul McKinney | Planned | 100031412 |
| 126 | 1.14 | **Syncade to Weigh Scale Interfaces Workstream** |  | 23d | 2021-01-20 | 2021-02-22 |  |  |  |  | 310.98d |  |  | 27h | 1,188 | 24000 | Modified | P2664 |  |  |  |  |
| 127 | 1.14.1 | PROJECTNAME - Scale Interface Design |  | 5d | 2021-01-20 | 2021-01-27 | 125 | 2021-01-14 | 2021-01-20 | 0d | 310.98d | 0d | MES Lead Engineer | 9h | 396 | 24000 | Modified | P2664 | 24010 | Paul McKinney | Planned | 100031413 |
| 128 | 1.14.2 | PROJECTNAME - Syncade Development Scale Interface |  | 14d | 2021-01-27 | 2021-02-16 | 127 | 2021-01-21 | 2021-02-09 | 0d | 310.98d | 0d | MES Engineer | 9h | 396 | 24000 | Modified | P2664 | 24020 | Paul McKinney | Planned | 100031414 |
| 129 | 1.14.3 | PROJECTNAME - Scale Configration Interface Complete MS | milestone | 0d | 2021-02-16 | 2021-02-16 | 128 | 2021-02-09 | 2021-02-09 | 0d | 310.98d | 0d |  |  |  | 24000 | Modified | P2664 | 24030 | Paul McKinney | Planned | 100031415 |
| 130 | 1.14.4 | PROJECTNAME - Scale Interface Developer Testing |  | 4d | 2021-02-16 | 2021-02-22 | 129 | 2021-02-10 | 2021-02-15 | 0d | 310.98d |  | MES Engineer | 9h | 396 | 24000 | Modified | P2664 | 24040 | Paul McKinney | Planned | 100031416 |
| 131 | 1.15 | **SOP and WI Workstream** |  | 106.41d | 2020-11-25 | 2021-04-22 |  |  |  |  | 267d |  |  | 9h | 396 | 25000 | Modified | P2664 |  |  |  |  |
| 132 | 1.15.1 | PROJECTNAME - Document Management Configuration |  | 5d | 2020-11-25 | 2020-12-02 | 145 | 2021-07-09 | 2021-07-15 | 0d | 364.41d | 0d | LCS-Support/Site Service Systems En | 9h | 396 | 25000 | Modified | P2664 | 25010 | Paul McKinney | Planned | 100031417 |
| 133 | 1.15.2 | PROJECTNAME - SOP and WI Redlines MS | milestone | 0d | 2021-03-15 | 2021-03-15 | 103 | 2021-03-15 | 2021-03-15 | 0d | 295d |  |  |  |  | 25000 | Modified | P2664 | 25020 | Paul McKinney | Planned | 100031418 |
| 134 | 1.15.3 | PROJECTNAME - MES Change Management Strategy MS | milestone | 0d | 2021-04-12 | 2021-04-12 | 107 | 2021-04-12 | 2021-04-12 | 0d | 275d |  |  |  |  | 25000 | Modified | P2664 | 25030 | Paul McKinney | Planned | 100031419 |
| 135 | 1.15.4 | PROJECTNAME - SOP and WI Updates MS | milestone | 0d | 2021-04-12 | 2021-04-12 | 107 | 2021-04-12 | 2021-04-12 | 0d | 275d |  |  |  |  | 25000 | Modified | P2664 | 25040 | Paul McKinney | Planned | 100031420 |
| 136 | 1.15.5 | PROJECTNAME - SOP and WI Approval MS | milestone | 0d | 2021-04-22 | 2021-04-22 | 109 | 2021-04-22 | 2021-04-22 | 0d | 267d |  |  |  |  | 25000 | Modified | P2664 | 25050 | Paul McKinney | Planned | 100031421 |

| ID | WBS | Task | Type | Duration | Start | Finish | Predecessors | Baseline start | Baseline finish | Baseline duration | Total slack | Free slack | Resources | Work | Cost | Sub Project ID | Import Comments | Text5 | Activity ID | Responsible | Activity Status | Text11 |
| --- | --- | --- | --- | --- | --- | --- | --- | --- | --- | --- | --- | --- | --- | --- | --- | --- | --- | --- | --- | --- | --- | --- |
| 137 | 1.16 | **Syncade Infrastructure Workstream** |  | 487d | 2020-05-01 | 2022-03-14 |  |  |  |  | 35d |  |  | 99h | 3,168 | 26000 | Modified | P2664 |  |  |  |  |
| 138 | 1.16.1 | PROJECTNAME - Setup Cornerstone Syncade VM |  | 487d | 2020-05-01 | 2022-03-14 |  | 2020-05-01 | 2020-05-08 | 0d | 35d |  | LCS-Support/Site Service Systems En | 9h | 396 | 26000 | Modified | P2664 | 26010 | Paul McKinney | Released | 100031422 |
| 139 | 1.16.2 | PROJECTNAME - Setup Cornerstone Syncade Instance |  | 487d | 2020-05-01 | 2022-03-14 |  | 2020-05-01 | 2020-05-08 | 0d | 35d |  | MES Engineer | 9h | 396 | 26000 | Modified | P2664 | 26012 | Paul McKinney | Released | 100032301 |
| 140 | 1.16.3 | PROJECTNAME - MES System Architecture Drawing |  | 4d | 2020-08-21 | 2020-08-27 | 30 | 2021-03-23 | 2021-03-29 | 0d | 332.16d | 0d | LCS-Support/Site Service Systems En | 9h | 396 | 26000 | Modified | P2664 | 26020 | Paul McKinney | Planned | 100031423 |
| 141 | 1.16.4 | PROJECTNAME - Syncade Infrastructure BOM Approval MS | milestone | 0d | 2020-09-03 | 2020-09-03 | 140FS+40h | 2021-05-03 | 2021-05-03 | 0d | 332.16d | 0d |  |  |  | 26000 | Modified | P2664 | 26030 | Paul McKinney | Planned | 100031424 |
| 142 | 1.16.5 | PROJECTNAME - Syncade Infrastructure Order MS | milestone | 0d | 2020-09-24 | 2020-09-24 | 141FS+120h | 2021-05-07 | 2021-05-07 | 0d | 332.16d | 0d |  |  |  | 26000 | Modified | P2664 | 26040 | Paul McKinney | Planned | 100031425 |
| 143 | 1.16.6 | PROJECTNAME - Syncade Infrastructure CCI Arrival MS | milestone | 0d | 2020-11-05 | 2020-11-05 | 142FS+240h | 2021-06-18 | 2021-06-18 | 0d | 332.16d | 0d |  |  |  | 26000 | Modified | P2664 | 26050 | Paul McKinney | Planned | 100031426 |
| 144 | 1.16.7 | PROJECTNAME - Server Room Network Drops & Power Installed MS | milestone | 0d | 2020-11-05 | 2020-11-05 | 143 | 2021-06-18 | 2021-06-18 | 0d | 332.16d | 0d |  |  |  | 26000 | Modified | P2664 | 26060 | Paul McKinney | Planned | 100031427 |
| 145 | 1.16.8 | PROJECTNAME - Development Servers Setup |  | 14d | 2020-11-05 | 2020-11-25 | 144 | 2021-06-21 | 2021-07-08 | 0d | 332.16d | 0d | LCS-Support/Site Service Systems En | 9h | 396 | 26000 | Modified | P2664 | 26070 | Paul McKinney | Planned | 100031428 |
| 146 | 1.16.9 | PROJECTNAME - Production Servers Setup |  | 14d | 2020-11-25 | 2020-12-15 | 145 | 2021-07-09 | 2021-07-28 | 0d | 332.16d | 0d | LCS-Support/Site Service Systems En | 9h | 396 | 26000 | Modified | P2664 | 26080 | Paul McKinney | Planned | 100031429 |
| 147 | 1.16.10 | PROJECTNAME - Syncade Infrastructure Shipped to Ineos MS |  | 1.12d | 2020-12-15 | 2020-12-16 | 146 | 2021-07-28 | 2021-07-28 | 0d | 332.16d | 0d |  | 9h |  | 26000 | Modified | P2664 | 26082 | Paul McKinney | Planned | 100032440 |
| 148 | 1.16.11 | PROJECTNAME - Syncade Infrastructure Ineos Arrival MS |  | 1.12d | 2020-12-30 | 2020-12-31 | 147FS+80h | 2021-08-11 | 2021-08-11 | 0d | 332.16d | 0d |  | 9h |  | 26000 | Modified | P2664 | 26083 | Paul McKinney | Planned | 100032441 |
| 149 | 1.16.12 | PROJECTNAME - Workstations Network Drops & Power Installed MS |  | 1.12d | 2020-12-15 | 2020-12-16 | 146 | 2021-07-28 | 2021-07-28 | 0d | 343.29d | 11.12d |  | 9h |  | 26000 | Modified | P2664 | 26090 | Paul McKinney | Planned | 100031430 |
| 150 | 1.16.13 | PROJECTNAME - Workstations Install |  | 5d | 2020-12-31 | 2021-01-07 | 149, 148 | 2021-08-12 | 2021-08-18 | 0d | 332.16d | 0d | LCS-Support/Site Service Systems En | 9h | 396 | 26000 | Modified | P2664 | 26100 | Paul McKinney | Planned | 100031431 |
| 151 | 1.16.14 | PROJECTNAME - Printers Install |  | 5d | 2021-01-07 | 2021-01-14 | 150 | 2021-08-19 | 2021-08-25 | 0d | 332.16d | 0d | LCS-Support/Site Service Systems En | 9h | 396 | 26000 | Modified | P2664 | 26110 | Paul McKinney | Planned | 100031432 |
| 152 | 1.16.15 | PROJECTNAME - Bar Code Scanners Install |  | 5d | 2021-01-14 | 2021-01-21 | 151 | 2021-08-26 | 2021-09-01 | 0d | 332.16d | 0d | LCS-Support/Site Service Systems En | 9h | 396 | 26000 | Modified | P2664 | 26120 | Paul McKinney | Planned | 100031433 |
| 153 | 1.17 | **Syncade Training Workstream T&E** |  | 310d | 2020-05-01 | 2021-07-08 |  |  |  |  | 212d |  |  | 27h | 1,188 | 27000 | Modified | P2664 |  |  |  |  |
| 154 | 1.17.1 | PROJECTNAME - Syncade Training Project Management |  | 14d | 2021-06-21 | 2021-07-08 | 115, 143 | 2021-06-21 | 2021-07-08 | 0d | 212d |  | Project Manager | 9h | 396 | 27000 | Modified | P2664 | 27010 | Paul McKinney | Planned | 100031434 |
| 155 | 1.17.2 | PROJECTNAME - Syncade Training Materials |  | 14d | 2020-11-05 | 2020-11-25 | 143 | 2021-06-21 | 2021-07-08 | 0d | 369.41d | 5d | MES Lead Engineer | 9h | 396 | 27000 | Modified | P2664 | 27020 | Paul McKinney | Planned | 100031435 |
| 156 | 1.17.3 | PROJECTNAME - Syncade Training |  | 4d | 2020-12-02 | 2020-12-08 | 132, 155 | 2021-07-16 | 2021-07-21 | 0d | 364.41d |  | MES Lead Engineer | 9h | 396 | 27000 | Modified | P2664 | 27030 | Paul McKinney | Planned | 100031436 |
| 157 | 1.17.4 | PROJECTNAME - Conduct MES Train The Trainer MS | milestone | 0d | 2020-05-01 | 2020-05-01 | 170FF-120h | 2021-08-27 | 2021-08-27 | 0d | 522d |  |  |  |  | 27000 | Modified | P2664 | 27040 | Paul McKinney | Planned | 100031437 |
| 158 | 1.17.5 | PROJECTNAME - Conduct MES End User Training MS | milestone | 0d | 2020-05-07 | 2020-05-07 | 170FF-40h | 2021-09-10 | 2021-09-10 | 0d | 517d |  |  |  |  | 27000 | Modified | P2664 | 27050 | Paul McKinney | Planned | 100031438 |
| 159 | 1.18 | **Cutover Planning** |  | 0d | 2020-05-01 | 2020-05-01 |  |  |  |  | 522d |  |  |  |  | 28000 | Modified | P2664 |  |  |  |  |
| 160 | 1.18.1 | PROJECTNAME - Syncade Cutover Plan MS | milestone | 0d | 2020-05-01 | 2020-05-01 | 170FF-120h | 2021-08-27 | 2021-08-27 | 0d | 522d |  |  |  |  | 28000 | Modified | P2664 | 28010 | Paul McKinney | Planned | 100031439 |
| 161 | 1.18.2 | PROJECTNAME - Business Cutover & Support Plan MS | milestone | 0d | 2020-05-01 | 2020-05-01 | 170FF-120h | 2021-08-27 | 2021-08-27 | 0d | 522d |  |  |  |  | 28000 | Modified | P2664 | 28020 | Paul McKinney | Planned | 100031440 |

| ID | WBS | Task | Type | Duration | Start | Finish | Predecessors | Baseline start | Baseline finish | Baseline duration | Total slack | Free slack | Resources | Work | Cost | Sub Project ID | Import Comments | Text5 | Activity ID | Responsible | Activity Status | Text11 |
| --- | --- | --- | --- | --- | --- | --- | --- | --- | --- | --- | --- | --- | --- | --- | --- | --- | --- | --- | --- | --- | --- | --- |
| 162 | 1.19 | **Syncade Startup T&E** |  | 110d | 2020-05-01 | 2020-10-01 |  |  |  |  | 412d |  |  | 54h | 2,376 | 29000 | Modified | P2664 |  |  |  |  |
| 163 | 1.19.1 | PROJECTNAME - Shutdown MS | milestone | 0d | 2020-05-01 | 2020-05-01 | 58 | 2021-09-06 | 2021-09-06 | 0d | 412d | 0d |  |  |  | 29000 | Modified | P2664 | 29010 | Paul McKinney | Planned | 100031441 |
| 164 | 1.19.2 | PROJECTNAME - Syncade Startup Project Management |  | 106d | 2020-05-01 | 2020-09-25 | 163 | 2021-09-06 | 2022-01-31 | 0d | 416d |  | Project Manager | 9h | 396 | 29000 | Modified | P2664 | 29020 | Paul McKinney | Planned | 100031442 |
| 165 | 1.19.3 | PROJECTNAME - Syncade Configuration Migration |  | 4d | 2020-05-01 | 2020-05-06 | 163 | 2021-09-06 | 2021-09-09 | 0d | 412d | 0d | MES Lead Engineer | 9h | 396 | 29000 | Modified | P2664 | 29030 | Paul McKinney | Planned | 100031443 |
| 166 | 1.19.4 | PROJECTNAME - On-Site Startup |  | 106d | 2020-05-07 | 2020-10-01 | 165 | 2021-09-10 | 2022-02-04 | 0d | 412d |  | MES Lead Engineer | 9h | 396 | 29000 | Modified | P2664 | 29040 | Paul McKinney | Planned | 100031444 |
| 167 | 1.19.5 | PROJECTNAME - On-Site Startup (OT 1.5X) |  | 106d | 2020-05-07 | 2020-10-01 | 165 | 2021-09-10 | 2022-02-04 | 0d | 412d |  | MES Lead Engineer | 9h | 396 | 29000 | Modified | P2664 | 29050 | Paul McKinney | Planned | 100031445 |
| 168 | 1.19.6 | PROJECTNAME - On-Site Startup (OT 2X) |  | 106d | 2020-05-07 | 2020-10-01 | 165 | 2021-09-10 | 2022-02-04 | 0d | 412d |  | MES Lead Engineer | 9h | 396 | 29000 | Modified | P2664 | 29060 | Paul McKinney | Planned | 100031446 |
| 169 | 1.19.7 | PROJECTNAME - System Startup Travel Time |  | 106d | 2020-05-07 | 2020-10-01 | 165 | 2021-09-10 | 2022-02-04 | 0d | 412d |  | MES Lead Engineer | 9h | 396 | 29000 | Modified | P2664 | 29070 | Paul McKinney | Planned | 100031447 |
| 170 | 1.19.8 | PROJECTNAME - Startup MS | milestone | 0d | 2020-05-14 | 2020-05-14 | 65 | 2021-09-17 | 2021-09-17 | 0d | 512d | 0d |  |  |  | 29000 | Modified | P2664 | 29080 | Paul McKinney | Planned | 100031448 |
| 171 | 1.19.9 | PROJECTNAME - System Commissioning Expenses |  | 106d | 2020-05-01 | 2020-09-25 | 163 | 2021-09-06 | 2022-01-31 | 0d | 416d |  |  |  |  | 29000 | Modified | P2664 | EXPENSE | Paul McKinney | Planned | 100031449 |
| 172 | 2 | **Milestone Invoicing** |  | 262d | 2020-05-01 | 2021-05-03 |  |  |  |  | 260d |  |  |  |  | 90000 | Modified | P2664 |  |  |  |  |
| 173 | 2.1 | PROJECTNAME - Order Placement | milestone | 0d | 2020-05-01 | 2020-05-01 |  | 2020-05-01 | 2020-05-01 | 0d | 522d |  |  |  |  | 90000 | Modified | P2664 | 91010 | Paul McKinney | Released | 100029267 |
| 174 | 2.2 | PROJECTNAME - Software Design Complete | milestone | 0d | 2021-03-15 | 2021-03-15 | 103, 123 |  |  |  | 295d |  |  |  |  | 90000 | Modified | P2664 | 91020 | Paul McKinney | Released | 100029268 |
| 175 | 2.3 | PROJECTNAME - Hardware Design Complete | milestone | 0d | 2020-08-21 | 2020-08-21 | 30 | 2021-04-13 | 2021-04-13 | 0d | 441.41d |  |  |  |  | 90000 | Modified | P2664 | 91030 | Paul McKinney | Released | 100029269 |
| 176 | 2.4 | PROJECTNAME - Integration Testing Complete | milestone | 0d | 2021-04-05 | 2021-04-05 | 105SS |  |  |  | 281d |  |  |  |  | 90000 | Modified | P2664 | 91040 | Paul McKinney | Released | 100029270 |
| 177 | 2.5 | PROJECTNAME - FAT Complete | milestone | 0d | 2021-05-03 | 2021-05-03 | 108 |  |  |  | 260d |  |  |  |  | 90000 | Modified | P2664 | 91050 | Paul McKinney | Released | 100029271 |
| 178 | 2.6 | PROJECTNAME - Installation Complete | milestone | 0d | 2021-01-21 | 2021-01-21 | 60, 152 | 2021-09-10 | 2021-09-10 | 0d | 332.16d |  |  |  |  | 90000 | Modified | P2664 | 91060 | Paul McKinney | Released | 100029272 |
